# PS-UPG

Schedule from Primavera P6, 2026-08-03 to 2027-02-16, data date 2026-08-03.
Must finish by 2027-02-15

## Schedule

| ID | WBS | Activity | Duration | Start | Finish | Predecessors | Total float | Free float |
| --- | --- | --- | --- | --- | --- | --- | --- | --- |
|  | WBS-2000 | **Pump Station Upgrade** |  | 2026-08-03 | 2027-02-16 |  |  |  |
|  | WBS-2001 | **Design** |  | 2026-08-03 | 2026-09-11 |  |  |  |
| D010 |  | Concept Design | 10d | 2026-08-03 | 2026-08-14 | M010 | 0d |  |
| D020 |  | Detailed Design | 15d | 2026-08-17 | 2026-09-04 | D010 | 0d |  |
| D030 |  | Design Review & Approval | 5d | 2026-09-07 | 2026-09-11 | D020 | 0d |  |
|  | WBS-2002 | **Procurement** |  | 2026-09-14 | 2026-11-06 |  |  |  |
| P010 |  | Procure Pumps (Long Lead) | 40d | 2026-09-14 | 2026-11-06 | D030 | 29d | 0d |
| P020 |  | Procure Pipework | 20d | 2026-09-14 | 2026-10-09 | D030 | 52d | 0d |
| P030 |  | Procure Switchboard | 30d | 2026-09-14 | 2026-10-23 | D030 | 38d | 0d |
|  | WBS-2003 | **Civil Works** |  | 2026-09-14 | 2026-12-16 |  |  |  |
| C010 |  | Site Establishment | 5d | 2026-09-14 | 2026-09-18 | D030 | 0d |  |
| C020 |  | Demolition of Existing Structures | 8d | 2026-09-21 | 2026-09-30 | C010 | 0d |  |
| C030 |  | Bulk Excavation | 6d | 2026-10-01 | 2026-10-08 | C020 | 0d |  |
| C040 |  | Piling | 10d | 2026-10-09 | 2026-10-22 | C030 | 0d |  |
| C050 |  | Foundations & Ground Slab | 12d | 2026-10-23 | 2026-11-09 | C040 | 0d |  |
| C060 |  | Concrete Superstructure | 15d | 2026-11-12 | 2026-12-02 | C050 FS+2d | 0d |  |
| C070 |  | Building Envelope & Roof | 10d | 2026-12-03 | 2026-12-16 | C060 | 0d |  |
|  | WBS-2004 | **Mechanical** |  | 2026-12-03 | 2026-12-29 |  |  |  |
| M100 |  | Install Pumps | 8d | 2026-12-03 | 2026-12-14 | P010, C060 | 11d | 0d |
| M110 |  | Install Pipework & Valves | 12d | 2026-12-08 | 2026-12-23 | P020, M100 SS+3d | 11d | 0d |
| M120 |  | Hydrostatic Testing | 4d | 2026-12-24 | 2026-12-29 | M110 | 11d | 0d |
|  | WBS-2005 | **Electrical** |  | 2026-12-17 | 2027-01-13 |  |  |  |
| E010 |  | Install Switchboard | 5d | 2026-12-17 | 2026-12-23 | P030, C070 | 0d |  |
| E020 |  | Cable Installation | 10d | 2026-12-24 | 2027-01-06 | E010 | 0d |  |
| E030 |  | Terminations & Point-to-Point | 5d | 2027-01-07 | 2027-01-13 | E020 | 0d |  |

| ID | WBS | Activity | Type | Duration | Start | Finish | Predecessors | Total float |
| --- | --- | --- | --- | --- | --- | --- | --- | --- |
|  | WBS-2006 | **Commissioning** |  |  | 2027-01-14 | 2027-02-15 |  |  |
| T010 |  | Pre-Commissioning Checks |  | 5d | 2027-01-14 | 2027-01-20 | M120, E030 | 0d |
| T020 |  | Wet Commissioning |  | 8d | 2027-01-21 | 2027-02-01 | T010 | 0d |
| T030 |  | Performance Trials |  | 10d | 2027-02-02 | 2027-02-15 | T020 | 0d |
|  | WBS-2007 | **Milestones** |  |  | 2026-08-03 | 2027-02-16 |  |  |
| M010 |  | Notice to Proceed | milestone | 0d | 2026-08-03 | 2026-08-03 |  | 0d |
| M900 |  | Practical Completion | milestone | 0d | 2027-02-16 | 2027-02-16 | T030 | 0d |
